# Bright Source

Schedule from MS Project, 2024-05-23 to 2028-06-22, status date 2024-06-19, costs in $, A marks actual dates.

## Calendars

- Standard: Mon-Fri 08:00-12:00, 13:00-17:00; Sat-Sun off.

## Resources

| Resource | Rate | Cost per use | Notes |
| --- | --- | --- | --- |
| Project Manager | 150 | 5000 | Responsible for overseeing all project phases, from initiation through closure. Expertise: Strong background in managing large-scale infrastructure projects, with excellent leadership and communication skills. Backup: Assistant Project Manager, who is equally capable of stepping in when needed. / Over-Allocation Reason: The Project Manager is over-allocated due to the need to manage multiple overlapping phases of the project, including initiation, planning, and the transition into execution. Their role requires constant attention to detail, coordination, and communication across all project aspects. / Comment: Over-allocation is justified as temporary during critical project milestones to ensure all elements remain on track and issues are resolved promptly. It is crucial during phases where strategic decision-making and stakeholder management are most intense. |
| Business Analyst | 200 | 2500 | Expertise: Specializes in assessing business processes, gathering requirements, and translating them into functional specifications that align with project objectives. Skilled in bridging the gap between IT and business units, ensuring that project solutions meet both technological and business needs. / Backup: Assistant Business Analyst, who has trained under the Business Analyst and has good knowledge of the project requirements and stakeholder needs. / Over-Allocation Reason: The Business Analyst is over-allocated because of the extensive requirement gathering and scope definition tasks that coincide with multiple critical development activities. Their expertise is also required for continuous adjustments to project specifications based on evolving stakeholder feedback and market conditions. / Comment: This temporary over-allocation is necessary to maintain the alignment of project outputs with business objectives and to handle unexpected shifts in project scope or requirements efficiently. |
| Team Lead | 100 | 2500 | Over-Allocation Reason: Team Leads are over-allocated as they are managing multiple sub-teams whose work needs to be closely integrated. The concurrent running of several project activities requires them to oversee the workloads, outputs, and coordination of their respective teams intensely. / Comment: Essential for maintaining high productivity and cohesion among team members, especially during peak project activities. Adequate support and periodic relief can help manage this over-allocation. |
| Scheduler | 50 | 5000 |  |
| HR Manager | 100 |  | Over-Allocation Reason: The HR Manager is over-allocated due to ongoing recruitment, training, and management of new team members as the project scales. Additionally, they are involved in resolving conflicts and ensuring compliance with labor laws, which can peak at various project stages. / Comment: Critical for ensuring the project has the right talent and that all team members are well-supported throughout the project lifecycle. Strategies for handling this include delegating routine tasks and using HR software to automate processes. |
| Resource Manager | 120 |  |  |
| Risk Manager | 100 |  | Focuses on identifying, analyzing, and mitigating project risks. Expertise: Expert in quantitative risk analysis and mitigation strategy development, with a focus on construction and environmental risks. Backup: Risk Analyst from the same department with a good track record. |
| Financial Analyst | 150 |  | Over-Allocation Reason: The Financial Analyst faces over-allocation during periods of budget re-evaluation, financial reporting, and when securing additional funding or managing expenditures as project demands evolve. / Comment: This roles over-allocation is justified by the need to continuously monitor and adjust financial strategies to safeguard the project's financial health and ensure compliance with financial objectives and external funding requirements. |
| Community Manager | 100 |  |  |
| Educators | 50 |  |  |
| Data Analyst | 50 |  | Expertise: Specializes in analyzing complex datasets to inform decision-making processes, especially useful for performance tracking and evaluating community engagement outcomes. Proficient in using advanced analytical tools and software to provide insights and trends that guide project adjustments. / Backup: Assistant Data Analyst, a junior team member who has been working closely with the Data Analyst and is familiar with all ongoing analyses and methodologies used in the project. |
| Social Worker | 50 |  |  |
| Communication Specialist | 100 |  |  |
| Environmental Biologist | 100 |  | Specializes in habitat restoration and wildlife conservation, crucial for the environmental assessment and compliance aspects of the project. Expertise: Over 8 years of experience in environmental studies and active fieldwork. Backup: Junior Biologist, trained under this biologist and knowledgeable about project specifics. |
| IT Specialist | 120 |  |  |
| Legal Advisor | 150 |  |  |
| Surveyor | 100 |  |  |
| Contract Manager | 80 |  |  |
| Design Engineer | 120 |  |  |
| Testing Engineer | 150 |  |  |
| Site Analyst | 100 |  |  |
| Inspector | 100 |  |  |
| Compliance Officer | 80 |  |  |
| Software Engineer | 150 |  | Expertise: Critical in setting up and maintaining monitoring systems for community feedback and environmental impacts, ensuring all systems function seamlessly and data is accurately collected. / Backup: Junior Systems Engineer, trained under this engineer with adequate experience in system maintenance and troubleshooting. |
| Procurement Officer | 100 |  |  |
| Construction Manager | 150 |  |  |
| Engineers | 100 |  |  |
| Installation Crew | 90 |  |  |
| Electrical Engineer | 100 |  |  |
| HVAC Engineer | 120 |  |  |
| Safety Officer | 100 |  |  |
| Site Crew | 90 |  |  |
| Document Control Specialist | 90 |  |  |
| Project team | 500 |  |  |

## Schedule

| ID | WBS | Task | Type | Duration | Start | Finish | Predecessors | Complete | Remaining | Baseline start | Baseline finish | Baseline duration | Total slack | Free slack | Constraint | Resources | Work | Actual work | Cost | Baseline cost | Actual cost |
| --- | --- | --- | --- | --- | --- | --- | --- | --- | --- | --- | --- | --- | --- | --- | --- | --- | --- | --- | --- | --- | --- |
| 1 | 1 | **BrightSource Solar Project** |  | 1066d | 2024-05-23 A | 2028-06-22 |  | 3% | 1030.63d | 2024-05-23 | 2028-06-22 | 1066d | 0d |  |  |  | 13840h | 288h | 1,968,900 | 1,968,900 | 74,200 |
| 2 | 1.1 | **Initiation** |  | 142d | 2024-05-23 A | 2024-12-06 |  | 23% | 109.44d | 2024-05-23 | 2024-12-06 | 142d | 924d |  |  |  | 1984h | 288h | 406,500 | 406,500 | 74,200 |
| 3 | 1.1.1 | **Project Management** |  | 15d | 2024-05-23 A | 2024-06-12 A |  | 100% |  | 2024-05-23 | 2024-06-12 | 15d |  |  |  |  |  |  |  |  |  |
| 4 | 1.1.1.1 | Project Charter Development |  | 10d | 2024-05-23 A | 2024-06-05 A |  | 100% |  | 2024-05-23 | 2024-06-05 | 10d |  |  |  |  |  |  |  |  |  |
| 5 | 1.1.1.2 | Define project objectives |  | 5d | 2024-06-06 A | 2024-06-12 A | 4 | 100% |  | 2024-06-06 | 2024-06-12 | 5d |  |  |  |  |  |  |  |  |  |
| 6 | 1.1.2 | **Stakeholders Identification** |  | 11d | 2024-05-23 A | 2024-06-06 A |  | 100% |  | 2024-05-23 | 2024-06-06 | 11d |  |  |  |  | 128h | 128h | 38,700 | 38,700 | 38,700 |
| 7 | 1.1.2.1 | Identify stakeholders |  | 1d | 2024-05-23 A | 2024-05-23 A |  | 100% |  | 2024-05-23 | 2024-05-23 | 1d |  |  | start no earlier than 2024-05-23 | Project Manager | 8h | 8h | 6,200 | 6,200 | 6,200 |
| 8 | 1.1.2.2 | List all stakeholders |  | 5d | 2024-05-24 A | 2024-05-30 A | 7 | 100% |  | 2024-05-24 | 2024-05-30 | 5d |  |  |  | Project Manager | 40h | 40h | 11,000 | 11,000 | 11,000 |
| 9 | 1.1.2.3 | Assess stakeholder impact |  | 5d | 2024-05-31 A | 2024-06-06 A | 8 | 100% |  | 2024-05-31 | 2024-06-06 | 5d |  |  |  | Business Analyst; Project Manager | 80h | 80h | 21,500 | 21,500 | 21,500 |
| 10 | 1.1.3 | **Project Scope Definition** |  | 40d | 2024-06-07 A | 2024-08-01 |  | 25% | 30d | 2024-06-07 | 2024-08-01 | 40d | 1015d |  |  |  | 720h | 160h | 135,000 | 135,000 | 35,500 |
| 11 | 1.1.3.1 | Develop scope statement |  | 10d | 2024-06-07 A | 2024-06-20 A | 4 | 100% |  | 2024-06-07 | 2024-06-20 | 10d |  |  | must start on 2024-06-07 | Project Manager; Business Analyst | 160h | 160h | 35,500 | 35,500 | 35,500 |
| 12 | 1.1.3.2 | Create work breakdown structure |  | 10d | 2024-06-21 | 2024-07-04 | 11 |  |  | 2024-06-21 | 2024-07-04 | 10d | 8d | 0d |  | Business Analyst; Project Manager; Team Lead | 240h |  | 46,000 | 46,000 |  |
| 13 | 1.1.3.3 | **Project Schedule Development** |  | 37d | 2024-06-12 | 2024-08-01 |  |  |  | 2024-06-12 | 2024-08-01 | 37d | 25d |  |  |  | 320h |  | 53,500 | 53,500 |  |
| 14 | 1.1.3.3.1 | Identify project tasks |  | 10d | 2024-07-05 | 2024-07-18 | 12 |  |  | 2024-07-05 | 2024-07-18 | 10d | 8d | 0d |  | Project Manager; Team Lead | 160h |  | 27,500 | 27,500 |  |
| 15 | 1.1.3.3.2 | Develop project timeline |  | 10d | 2024-07-19 | 2024-08-01 | 14 |  |  | 2024-07-19 | 2024-08-01 | 10d | 8d | 0d |  | Project Manager; Scheduler | 160h |  | 26,000 | 26,000 |  |
| 16 | 1.1.3.3.3 | Stakeholder Identification Completed | milestone | 0d | 2024-06-12 | 2024-06-12 |  |  |  | 2024-06-12 | 2024-06-12 | 0d | 1052d |  |  |  |  |  |  |  |  |
| 17 | 1.1.4 | **Team Formation and Resource Allocation** |  | 15d | 2024-07-26 | 2024-08-15 |  |  |  | 2024-07-26 | 2024-08-15 | 15d | 8d |  |  |  | 240h |  | 32,600 | 32,600 |  |
| 18 | 1.1.4.1 | Assign project roles |  | 10d | 2024-07-26 | 2024-08-08 | 15FS-5d |  |  | 2024-07-26 | 2024-08-08 | 10d | 8d | 0d |  | Project Manager; HR Manager | 80h |  | 15,000 | 15,000 |  |
| 19 | 1.1.4.2 | Allocate resources |  | 10d | 2024-08-02 | 2024-08-15 | 18FS-5d |  |  | 2024-08-02 | 2024-08-15 | 10d | 8d | 0d |  | HR Manager; Resource Manager | 160h |  | 17,600 | 17,600 |  |
| 20 | 1.1.5 | **Risk Management Plan** |  | 20d | 2024-08-16 | 2024-09-12 |  |  |  | 2024-08-16 | 2024-09-12 | 20d | 8d |  |  |  | 320h |  | 96,000 | 96,000 |  |
| 21 | 1.1.5.1 | Identify potential risks |  | 10d | 2024-08-16 | 2024-08-29 | 19 |  |  | 2024-08-16 | 2024-08-29 | 10d | 8d | 0d |  | Risk Manager; Project team | 160h |  | 48,000 | 48,000 |  |
| 22 | 1.1.5.2 | Develop risk mitigation strategies |  | 10d | 2024-08-30 | 2024-09-12 | 21 |  |  | 2024-08-30 | 2024-09-12 | 10d | 8d | 0d |  | Risk Manager; Project team | 160h |  | 48,000 | 48,000 |  |
| 23 | 1.1.6 | **Budget Allocation and Financial Planning** |  | 60d | 2024-09-13 | 2024-12-05 |  |  |  | 2024-09-13 | 2024-12-05 | 60d | 8d |  |  |  | 560h |  | 94,000 | 94,000 |  |
| 24 | 1.1.6.1 | Estimate project costs |  | 10d | 2024-09-13 | 2024-09-26 | 22 |  |  | 2024-09-13 | 2024-09-26 | 10d | 8d | 0d |  | Project Manager; Financial Analyst | 160h |  | 29,000 | 29,000 |  |
| 25 | 1.1.6.2 | Develop budget plan |  | 10d | 2024-09-27 | 2024-10-10 | 24 |  |  | 2024-09-27 | 2024-10-10 | 10d | 8d | 0d |  | Financial Analyst; Project Manager | 160h |  | 29,000 | 29,000 |  |
| 26 | 1.1.6.3 | Secure funding from DOE and investors |  | 30d | 2024-10-25 | 2024-12-05 | 25FS+10d |  |  | 2024-10-25 | 2024-12-05 | 30d | 8d | 0d |  | Financial Analyst | 240h |  | 36,000 | 36,000 |  |
| 27 | 1.1.7 | Kickoff meeting | milestone | 1d | 2024-12-06 | 2024-12-06 | 26 |  |  | 2024-12-06 | 2024-12-06 | 1d | 8d |  |  | Project team; Project Manager | 16h |  | 10,200 | 10,200 |  |

Notes:
- 2: The crticial path starts from the initiation and end on project closure. Tasks on the critical path include: / Develop Project Charter / Develop Scope Statement / Identify Project Tasks / Design Solar Power System / Construct Solar Towers / Conduct Safety Inspections / Final Acceptance
- 4: bottom-up estimation, past experience, may vary due to stakeholder availability
- 5: bottom-up estimation, SME input, may vary due to changes in scope
- 11: Develop Scope Statement (must start after Project Charter Development)
- 12: Bottom-up estimation, SME input, may vary due to project complexity
- 22: bottom-up estimation, SME input, may vary due to changes in risk likelihood)
- 27: Milestone

| ID | WBS | Task | Type | Duration | Start | Finish | Predecessors | Baseline start | Baseline finish | Baseline duration | Total slack | Constraint | Resources | Work | Cost | Baseline cost |
| --- | --- | --- | --- | --- | --- | --- | --- | --- | --- | --- | --- | --- | --- | --- | --- | --- |
| 28 | 1.2 | **Planning** |  | 344d | 2024-06-12 | 2025-10-06 |  | 2024-06-12 | 2025-10-06 | 344d | 136d |  |  | 2344h | 233,000 | 233,000 |
| 29 | 1.2.1 | **Community Management** |  | 45d | 2024-12-19 | 2025-02-19 |  | 2024-12-19 | 2025-02-19 | 45d | 0d |  |  | 600h | 54,000 | 54,000 |
| 30 | 1.2.1.1 | Community Engagement Strategies |  | 15d | 2024-12-19 | 2025-01-08 | 27 | 2024-12-19 | 2025-01-08 | 15d | 0d | must start on 2024-12-19 | Community Manager; Communication Specialist | 240h | 24,000 | 24,000 |
| 31 | 1.2.1.2 | Plan townhall meetings |  | 5d | 2025-01-09 | 2025-01-15 | 30 | 2025-01-09 | 2025-01-15 | 5d | 0d |  | Community Manager | 40h | 4,000 | 4,000 |
| 32 | 1.2.1.3 | Develop communication plan |  | 10d | 2025-01-16 | 2025-01-29 | 31 | 2025-01-16 | 2025-01-29 | 10d | 0d |  | Communication Specialist | 80h | 8,000 | 8,000 |
| 33 | 1.2.1.4 | Create education and awareness program |  | 15d | 2025-01-30 | 2025-02-19 | 32 | 2025-01-30 | 2025-02-19 | 15d | 0d |  | Community Manager; Educators | 240h | 18,000 | 18,000 |
| 34 | 1.2.2 | **Community Monitoring and Reporting** |  | 192d | 2024-06-12 | 2025-03-06 |  | 2024-06-12 | 2025-03-06 | 192d | 181d |  |  | 248h | 30,400 | 30,400 |
| 35 | 1.2.2.1 | Set up monitoring systems |  | 10d | 2025-02-20 | 2025-03-05 | 33 | 2025-02-20 | 2025-03-05 | 10d | 0d |  | IT Specialist; Financial Analyst; Community Manager | 240h | 29,600 | 29,600 |
| 36 | 1.2.2.2 | Report community feedback |  | 1d | 2025-03-06 | 2025-03-06 | 35 | 2025-03-06 | 2025-03-06 | 1d | 0d |  | Community Manager | 8h | 800 | 800 |
| 37 | 1.2.2.3 | Community Engagement Program Launched | milestone | 0d | 2024-06-12 | 2024-06-12 |  | 2024-06-12 | 2024-06-12 | 0d | 1052d |  |  |  |  |  |
| 38 | 1.2.3 | **Social Responsibilities Initiatives** |  | 20d | 2025-03-07 | 2025-04-03 |  | 2025-03-07 | 2025-04-03 | 20d | 0d |  |  | 160h | 16,000 | 16,000 |
| 39 | 1.2.3.1 | Implement social programs |  | 20d | 2025-03-07 | 2025-04-03 | 36 | 2025-03-07 | 2025-04-03 | 20d | 0d |  | Community Manager | 160h | 16,000 | 16,000 |
| 40 | 1.2.3.2 | Monitor social impact | milestone | 0d | 2025-04-03 | 2025-04-03 | 39 | 2025-04-03 | 2025-04-03 | 0d | 0d |  | Data Analyst; Community Manager |  |  |  |
| 41 | 1.2.4 | **Land Acquisition Communication Plan** |  | 2d | 2025-04-04 | 2025-04-07 |  | 2025-04-04 | 2025-04-07 | 2d | 0d |  |  | 16h | 1,600 | 1,600 |
| 42 | 1.2.4.1 | Communicate with concerned stakeholders |  | 2d | 2025-04-04 | 2025-04-07 | 40 | 2025-04-04 | 2025-04-07 | 2d | 0d |  | Community Manager | 16h | 1,600 | 1,600 |
| 43 | 1.2.5 | **Tortoise Rehabilitation** |  | 130d | 2025-04-08 | 2025-10-06 |  | 2025-04-08 | 2025-10-06 | 130d | 0d |  |  | 1320h | 131,000 | 131,000 |
| 44 | 1.2.5.1 | Conduct biological assessments |  | 20d | 2025-04-08 | 2025-05-05 | 42 | 2025-04-08 | 2025-05-05 | 20d | 0d |  | Environmental Biologist; Project Manager | 320h | 45,000 | 45,000 |
| 45 | 1.2.5.2 | **Monitoring** |  | 35d | 2025-05-06 | 2025-06-23 |  | 2025-05-06 | 2025-06-23 | 35d | 0d |  |  | 400h | 26,000 | 26,000 |
| 46 | 1.2.5.2.1 | Set up monitoring systems |  | 15d | 2025-05-06 | 2025-05-26 | 44 | 2025-05-06 | 2025-05-26 | 15d | 0d |  | Environmental Biologist; Data Analyst | 240h | 18,000 | 18,000 |
| 47 | 1.2.5.2.2 | Performance Tracking System |  | 10d | 2025-05-27 | 2025-06-09 | 46 | 2025-05-27 | 2025-06-09 | 10d | 0d |  | Data Analyst | 80h | 4,000 | 4,000 |
| 48 | 1.2.5.2.3 | Implement tracking system |  | 10d | 2025-06-10 | 2025-06-23 | 47 | 2025-06-10 | 2025-06-23 | 10d | 0d |  | Data Analyst | 80h | 4,000 | 4,000 |
| 49 | 1.2.5.3 | **Maintenance Plan** |  | 50d | 2025-06-24 | 2025-09-01 |  | 2025-06-24 | 2025-09-01 | 50d | 0d |  |  | 400h | 40,000 | 40,000 |
| 50 | 1.2.5.3.1 | Develop habitat monitoring plan |  | 20d | 2025-06-24 | 2025-07-21 | 48 | 2025-06-24 | 2025-07-21 | 20d | 0d |  | Environmental Biologist | 160h | 16,000 | 16,000 |
| 51 | 1.2.5.3.2 | Implement vegetation management |  | 30d | 2025-07-22 | 2025-09-01 | 50 | 2025-07-22 | 2025-09-01 | 30d | 0d |  | Environmental Biologist | 240h | 24,000 | 24,000 |

Notes:
- 36: bottom-up estimation, SME input, may vary due to feedback volume

| ID | WBS | Task | Type | Duration | Start | Finish | Predecessors | Baseline start | Baseline finish | Baseline duration | Total slack | Resources | Work | Cost | Baseline cost |
| --- | --- | --- | --- | --- | --- | --- | --- | --- | --- | --- | --- | --- | --- | --- | --- |
| 52 | 1.2.5.4 | **Address predator and threat management** |  | 25d | 2025-09-02 | 2025-10-06 |  | 2025-09-02 | 2025-10-06 | 25d | 0d |  | 200h | 20,000 | 20,000 |
| 53 | 1.2.5.4.1 | Restore wildlife habitats |  | 25d | 2025-09-02 | 2025-10-06 | 51 | 2025-09-02 | 2025-10-06 | 25d | 0d | Environmental Biologist | 200h | 20,000 | 20,000 |
| 54 | 1.3 | **Execution** |  | 989d | 2024-06-12 | 2028-03-27 |  | 2024-06-12 | 2028-03-27 | 989d | 63d |  | 8440h | 1,036,200 | 1,036,200 |
| 55 | 1.3.1 | **Land Acquisition** |  | 50d | 2025-10-07 | 2025-12-15 |  | 2025-10-07 | 2025-12-15 | 50d | 0d |  | 600h | 100,000 | 100,000 |
| 56 | 1.3.1.1 | US Fish & Wildlife Service Permission |  | 20d | 2025-10-07 | 2025-11-03 | 53 | 2025-10-07 | 2025-11-03 | 20d | 0d | Legal Advisor; Project Manager | 320h | 53,000 | 53,000 |
| 57 | 1.3.1.2 | Apply for permissions |  | 5d | 2025-11-04 | 2025-11-10 | 56 | 2025-11-04 | 2025-11-10 | 5d | 0d | Project Manager; Legal Advisor | 80h | 17,000 | 17,000 |
| 58 | 1.3.1.3 | Obtain approvals |  | 25d | 2025-11-11 | 2025-12-15 | 57 | 2025-11-11 | 2025-12-15 | 25d | 0d | Legal Advisor | 200h | 30,000 | 30,000 |
| 59 | 1.3.2 | **Mitigation Strategy Plan** |  | 20d | 2025-12-16 | 2026-01-12 |  | 2025-12-16 | 2026-01-12 | 20d | 0d |  | 320h | 45,000 | 45,000 |
| 60 | 1.3.2.1 | Develop mitigation strategies |  | 20d | 2025-12-16 | 2026-01-12 | 58 | 2025-12-16 | 2026-01-12 | 20d | 0d | Project Manager; Environmental Biologist | 320h | 45,000 | 45,000 |
| 61 | 1.3.3 | **Land Survey** |  | 15d | 2026-01-13 | 2026-02-02 |  | 2026-01-13 | 2026-02-02 | 15d | 0d |  | 120h | 12,000 | 12,000 |
| 62 | 1.3.3.1 | Conduct land survey |  | 15d | 2026-01-13 | 2026-02-02 | 60 | 2026-01-13 | 2026-02-02 | 15d | 0d | Surveyor | 120h | 12,000 | 12,000 |
| 63 | 1.3.4 | **Legal Agreements and Contracts** |  | 459d | 2024-06-12 | 2026-03-16 |  | 2024-06-12 | 2026-03-16 | 459d | 429d |  | 480h | 55,200 | 55,200 |
| 64 | 1.3.4.1 | Draft legal documents |  | 20d | 2026-02-03 | 2026-03-02 | 62 | 2026-02-03 | 2026-03-02 | 20d | 0d | Legal Advisor; Contract Manager | 320h | 36,800 | 36,800 |
| 65 | 1.3.4.2 | Finalize contracts | milestone | 10d | 2026-03-03 | 2026-03-16 | 64 | 2026-03-03 | 2026-03-16 | 10d | 0d | Legal Advisor; Contract Manager | 160h | 18,400 | 18,400 |
| 66 | 1.3.4.3 | Land Acquisition and Permit Approval | milestone | 0d | 2024-06-12 | 2024-06-12 |  | 2024-06-12 | 2024-06-12 | 0d | 1052d |  |  |  |  |
| 67 | 1.3.5 | **Concentrated Solar Power Facility** |  | 240d | 2026-03-17 | 2027-02-15 |  | 2026-03-17 | 2027-02-15 | 240d | 0d |  | 2640h | 333,200 | 333,200 |
| 68 | 1.3.5.1 | **System Design and Testing** |  | 60d | 2026-03-17 | 2026-06-08 |  | 2026-03-17 | 2026-06-08 | 60d | 0d |  | 480h | 62,400 | 62,400 |
| 69 | 1.3.5.1.1 | Design solar power system |  | 40d | 2026-03-17 | 2026-05-11 | 65 | 2026-03-17 | 2026-05-11 | 40d | 0d | Design Engineer | 320h | 38,400 | 38,400 |
| 70 | 1.3.5.1.2 | Conduct system tests |  | 20d | 2026-05-12 | 2026-06-08 | 69 | 2026-05-12 | 2026-06-08 | 20d | 0d | Testing Engineer | 160h | 24,000 | 24,000 |
| 71 | 1.3.5.2 | **Site Selection** |  | 45d | 2026-06-09 | 2026-08-10 |  | 2026-06-09 | 2026-08-10 | 45d | 0d |  | 720h | 100,000 | 100,000 |
| 72 | 1.3.5.2.1 | Evaluate potential sites |  | 30d | 2026-06-09 | 2026-07-20 | 70 | 2026-06-09 | 2026-07-20 | 30d | 0d | Site Analyst; Project Manager | 480h | 65,000 | 65,000 |
| 73 | 1.3.5.2.2 | Select optimal site |  | 15d | 2026-07-21 | 2026-08-10 | 72 | 2026-07-21 | 2026-08-10 | 15d | 0d | Site Analyst; Project Manager | 240h | 35,000 | 35,000 |
| 74 | 1.3.5.3 | **Biologist Hiring** |  | 15d | 2026-08-11 | 2026-08-31 |  | 2026-08-11 | 2026-08-31 | 15d | 0d |  | 240h | 30,000 | 30,000 |
| 75 | 1.3.5.3.1 | Recruit biologists |  | 15d | 2026-08-11 | 2026-08-31 | 73 | 2026-08-11 | 2026-08-31 | 15d | 0d | HR Manager; Legal Advisor | 240h | 30,000 | 30,000 |

Notes:
- 65: Milestone
- 70: Conduct System Tests (must start after Design Solar Power System)

| ID | WBS | Task | Type | Duration | Start | Finish | Predecessors | Baseline start | Baseline finish | Baseline duration | Total slack | Resources | Work | Cost | Baseline cost |
| --- | --- | --- | --- | --- | --- | --- | --- | --- | --- | --- | --- | --- | --- | --- | --- |
| 76 | 1.3.5.4 | **Site Inspection** |  | 60d | 2026-09-01 | 2026-11-23 |  | 2026-09-01 | 2026-11-23 | 60d | 0d |  | 720h | 80,800 | 80,800 |
| 77 | 1.3.5.4.1 | Inspect selected site |  | 10d | 2026-09-01 | 2026-09-14 | 75 | 2026-09-01 | 2026-09-14 | 10d | 0d | Inspector | 80h | 8,000 | 8,000 |
| 78 | 1.3.5.4.2 | **Acquiring Permits** |  | 30d | 2026-09-15 | 2026-10-26 |  | 2026-09-15 | 2026-10-26 | 30d | 0d |  | 480h | 60,000 | 60,000 |
| 79 | 1.3.5.4.2.1 | Obtain necessary permits |  | 30d | 2026-09-15 | 2026-10-26 | 77 | 2026-09-15 | 2026-10-26 | 30d | 0d | Legal Advisor; Inspector | 480h | 60,000 | 60,000 |
| 80 | 1.3.5.4.3 | **Regulatory Compliance Plan** |  | 20d | 2026-10-27 | 2026-11-23 |  | 2026-10-27 | 2026-11-23 | 20d | 0d |  | 160h | 12,800 | 12,800 |
| 81 | 1.3.5.4.3.1 | Develop compliance strategy |  | 20d | 2026-10-27 | 2026-11-23 | 79 | 2026-10-27 | 2026-11-23 | 20d | 0d | Compliance Officer | 160h | 12,800 | 12,800 |
| 82 | 1.3.5.5 | **Software Controlled Facility** |  | 30d | 2026-11-24 | 2027-01-04 |  | 2026-11-24 | 2027-01-04 | 30d | 0d |  | 240h | 36,000 | 36,000 |
| 83 | 1.3.5.5.1 | Implement control software |  | 30d | 2026-11-24 | 2027-01-04 | 81 | 2026-11-24 | 2027-01-04 | 30d | 0d | Software Engineer | 240h | 36,000 | 36,000 |
| 84 | 1.3.5.6 | **Material Procurement** |  | 30d | 2027-01-05 | 2027-02-15 |  | 2027-01-05 | 2027-02-15 | 30d | 0d |  | 240h | 24,000 | 24,000 |
| 85 | 1.3.5.6.1 | Purchase required materials |  | 30d | 2027-01-05 | 2027-02-15 | 83 | 2027-01-05 | 2027-02-15 | 30d | 0d | Procurement Officer | 240h | 24,000 | 24,000 |
| 86 | 1.3.6 | **Construction** |  | 290d | 2027-02-16 | 2028-03-27 |  | 2027-02-16 | 2028-03-27 | 290d | 0d |  | 4280h | 490,800 | 490,800 |
| 87 | 1.3.6.1 | Mobilize Construction Crew |  | 10d | 2027-02-16 | 2027-03-01 | 85 | 2027-02-16 | 2027-03-01 | 10d | 0d | Construction Manager; HR Manager | 160h | 20,000 | 20,000 |
| 88 | 1.3.6.2 | Construct Solar Towers |  | 60d | 2027-03-02 | 2027-05-24 | 87 | 2027-03-02 | 2027-05-24 | 60d | 0d | Construction Manager; Engineers | 960h | 120,000 | 120,000 |
| 89 | 1.3.6.3 | Install Heliostats |  | 60d | 2027-05-25 | 2027-08-16 | 88 | 2027-05-25 | 2027-08-16 | 60d | 0d | Installation Crew; Engineers | 960h | 91,200 | 91,200 |
| 90 | 1.3.6.4 | Install Steam Turbines |  | 45d | 2027-08-17 | 2027-10-18 | 89 | 2027-08-17 | 2027-10-18 | 45d | 0d | Engineers | 360h | 36,000 | 36,000 |
| 91 | 1.3.6.5 | Build Electrical Substation |  | 40d | 2027-10-19 | 2027-12-13 | 90 | 2027-10-19 | 2027-12-13 | 40d | 0d | Electrical Engineer; Construction Manager | 640h | 80,000 | 80,000 |
| 92 | 1.3.6.6 | Connect Electrical Systems |  | 20d | 2027-12-14 | 2028-01-10 | 91 | 2027-12-14 | 2028-01-10 | 20d | 0d | Construction Manager; Electrical Engineer | 320h | 40,000 | 40,000 |
| 93 | 1.3.6.7 | Implement Dry-Cooling System |  | 30d | 2028-01-11 | 2028-02-21 | 92 | 2028-01-11 | 2028-02-21 | 30d | 0d | HVAC Engineer; Construction Manager | 480h | 64,800 | 64,800 |
| 94 | 1.3.6.8 | Conduct Safety Inspections |  | 10d | 2028-02-22 | 2028-03-06 | 93 | 2028-02-22 | 2028-03-06 | 10d | 0d | Safety Officer; Inspector | 160h | 16,000 | 16,000 |
| 95 | 1.3.6.9 | Perform Site Clean-Up |  | 15d | 2028-03-07 | 2028-03-27 | 94 | 2028-03-07 | 2028-03-27 | 15d | 0d | Site Crew; Environmental Biologist | 240h | 22,800 | 22,800 |
| 96 | 1.3.6.10 | Construction Completed | milestone | 0d | 2028-03-27 | 2028-03-27 | 95 | 2028-03-27 | 2028-03-27 | 0d | 63d |  |  |  |  |
| 97 | 1.4 | **Monitoring and Controlling** |  | 709d | 2024-06-12 | 2027-03-01 |  | 2024-06-12 | 2027-03-01 | 709d | 343d |  |  | 15,000 | 15,000 |
| 98 | 1.4.1 | **Risk Management Plan** |  | 345d | 2025-11-03 | 2027-03-01 |  | 2025-11-03 | 2027-03-01 | 345d | 343d |  |  | 15,000 | 15,000 |
| 99 | 1.4.1.1 | Risk Identification and Analysis | milestone | 0d | 2025-11-03 | 2025-11-03 | 56 | 2025-11-03 | 2025-11-03 | 0d | 688d | Project Manager; Risk Manager |  | 5,000 | 5,000 |
| 100 | 1.4.1.2 | Implement Risk Mitigation Strategies | milestone | 0d | 2026-05-11 | 2026-05-11 | 69 | 2026-05-11 | 2026-05-11 | 0d | 553d | Risk Manager; Project Manager |  | 5,000 | 5,000 |
| 101 | 1.4.1.3 | Monitor and Control Risks | milestone | 0d | 2027-03-01 | 2027-03-01 | 87 | 2027-03-01 | 2027-03-01 | 0d | 343d | Project Manager; Risk Manager |  | 5,000 | 5,000 |

Notes:
- 96: Milestone

| ID | WBS | Task | Type | Duration | Start | Finish | Predecessors | Baseline start | Baseline finish | Baseline duration | Total slack | Resources | Work | Cost | Baseline cost |
| --- | --- | --- | --- | --- | --- | --- | --- | --- | --- | --- | --- | --- | --- | --- | --- |
| 102 | 1.4.2 | **Tortoise Rehabilitation Monitoring:** |  | 249d | 2024-06-12 | 2025-05-26 |  | 2024-06-12 | 2025-05-26 | 249d | 803d |  |  |  |  |
| 103 | 1.4.2.1 | Implement routine monitoring of tortoise health and activity | milestone | 0d | 2025-05-05 | 2025-05-05 | 44 | 2025-05-05 | 2025-05-05 | 0d | 818d | Environmental Biologist; Data Analyst |  |  |  |
| 104 | 1.4.2.2 | Monitor and Report on rehabilitation progress | milestone | 0d | 2025-05-26 | 2025-05-26 | 46 | 2025-05-26 | 2025-05-26 | 0d | 803d | Data Analyst; Environmental Biologist |  |  |  |
| 105 | 1.4.2.3 | Implementation of Tortoise Monitoring System | milestone | 0d | 2024-06-12 | 2024-06-12 |  | 2024-06-12 | 2024-06-12 | 0d | 1052d |  |  |  |  |
| 106 | 1.4.3 | **Community Monitoring and Reporting** |  | 10d | 2025-02-19 | 2025-03-05 |  | 2025-02-19 | 2025-03-05 | 10d | 861d |  |  |  |  |
| 107 | 1.4.3.1 | Conduct Regular Community Surveys | milestone | 0d | 2025-02-19 | 2025-02-19 | 33 | 2025-02-19 | 2025-02-19 | 0d | 871d | Community Manager; Data Analyst |  |  |  |
| 108 | 1.4.3.2 | Report Monitoring Results | milestone | 0d | 2025-03-05 | 2025-03-05 | 35 | 2025-03-05 | 2025-03-05 | 0d | 861d | Data Analyst; Community Manager |  |  |  |
| 109 | 1.5 | **Project Closure** |  | 63d | 2028-03-28 | 2028-06-22 |  | 2028-03-28 | 2028-06-22 | 63d | 0d |  | 1072h | 278,200 | 278,200 |
| 110 | 1.5.1 | **Project Report** |  | 11d | 2028-03-28 | 2028-04-11 |  | 2028-03-28 | 2028-04-11 | 11d | 0d |  | 176h | 40,000 | 40,000 |
| 111 | 1.5.1.1 | Compile project results |  | 5d | 2028-03-28 | 2028-04-03 | 95 | 2028-03-28 | 2028-04-03 | 5d | 0d | Data Analyst; Project Manager | 80h | 13,000 | 13,000 |
| 112 | 1.5.1.2 | Project Closure Checklist |  | 5d | 2028-04-04 | 2028-04-10 | 111 | 2028-04-04 | 2028-04-10 | 5d | 0d | Project Manager; Team Lead | 80h | 17,500 | 17,500 |
| 113 | 1.5.1.3 | Complete closure checklist |  | 1d | 2028-04-11 | 2028-04-11 | 112 | 2028-04-11 | 2028-04-11 | 1d | 0d | Team Lead; Project Manager | 16h | 9,500 | 9,500 |
| 114 | 1.5.2 | **Key Success Factors** |  | 5d | 2028-04-12 | 2028-04-18 |  | 2028-04-12 | 2028-04-18 | 5d | 0d |  | 80h | 31,000 | 31,000 |
| 115 | 1.5.2.1 | Identify success factors |  | 5d | 2028-04-12 | 2028-04-18 | 113 | 2028-04-12 | 2028-04-18 | 5d | 0d | Project Manager; Project team | 80h | 31,000 | 31,000 |
| 116 | 1.5.3 | **Areas for Improvement** |  | 10d | 2028-04-19 | 2028-05-02 |  | 2028-04-19 | 2028-05-02 | 10d | 0d |  | 160h | 57,000 | 57,000 |
| 117 | 1.5.3.1 | Document improvement areas |  | 10d | 2028-04-19 | 2028-05-02 | 115 | 2028-04-19 | 2028-05-02 | 10d | 0d | Project team; Project Manager | 160h | 57,000 | 57,000 |
| 118 | 1.5.4 | **Lessons Learned** |  | 21d | 2028-05-03 | 2028-05-31 |  | 2028-05-03 | 2028-05-31 | 21d | 16d |  | 240h | 67,500 | 67,500 |
| 119 | 1.5.4.1 | Record lessons learned |  | 21d | 2028-05-03 | 2028-05-31 | 117 | 2028-05-03 | 2028-05-31 | 21d | 16d | Project Manager; Project team; Team Lead | 240h | 67,500 | 67,500 |
| 120 | 1.5.5 | **Final Acceptance** |  | 10d | 2028-05-03 | 2028-05-16 |  | 2028-05-03 | 2028-05-16 | 10d | 0d |  | 160h | 27,500 | 27,500 |
| 121 | 1.5.5.1 | Obtain final acceptance |  | 10d | 2028-05-03 | 2028-05-16 | 117 | 2028-05-03 | 2028-05-16 | 10d | 0d | Project Manager; Team Lead | 160h | 27,500 | 27,500 |
| 122 | 1.5.6 | **Closure Meeting** |  | 11d | 2028-05-17 | 2028-05-31 |  | 2028-05-17 | 2028-05-31 | 11d | 0d |  | 16h | 9,500 | 9,500 |
| 123 | 1.5.6.1 | Conduct closure meeting |  | 2d | 2028-05-17 | 2028-05-31 | 121 | 2028-05-17 | 2028-05-31 | 2d | 0d | Team Lead; Project Manager | 16h | 9,500 | 9,500 |
| 124 | 1.5.7 | **Archiving Project Documentation** |  | 10d | 2028-06-01 | 2028-06-14 |  | 2028-06-01 | 2028-06-14 | 10d | 0d |  | 160h | 24,200 | 24,200 |
| 125 | 1.5.7.1 | Archive all documents |  | 10d | 2028-06-01 | 2028-06-14 | 123 | 2028-06-01 | 2028-06-14 | 10d | 0d | Document Control Specialist; Project Manager | 160h | 24,200 | 24,200 |

| ID | WBS | Task | Type | Duration | Start | Finish | Predecessors | Baseline start | Baseline finish | Baseline duration | Total slack | Resources | Work | Cost | Baseline cost |
| --- | --- | --- | --- | --- | --- | --- | --- | --- | --- | --- | --- | --- | --- | --- | --- |
| 126 | 1.5.8 | **Stakeholder Feedback and Satisfaction Evaluation** |  | 5d | 2028-06-15 | 2028-06-21 |  | 2028-06-15 | 2028-06-21 | 5d | 0d |  | 80h | 21,500 | 21,500 |
| 127 | 1.5.8.1 | Collect stakeholder feedback |  | 5d | 2028-06-15 | 2028-06-21 | 125 | 2028-06-15 | 2028-06-21 | 5d | 0d | Business Analyst; Project Manager | 80h | 21,500 | 21,500 |
| 128 | 1.5.9 | Project Closed | milestone | 1d | 2028-06-22 | 2028-06-22 | 127 | 2028-06-22 | 2028-06-22 | 1d | 0d |  |  |  |  |

Notes:
- 128: Milestone
